# Completed_Project

Schedule from MS Project, 2023-06-01 to 2023-10-05, status date 2023-10-05, costs in $, A marks actual dates.

## Calendars

- Standard: Mon-Fri 08:00-12:00, 13:00-17:00; Sat-Sun off.

## Resources

| Resource | Rate |
| --- | --- |
| Shreekar | 15 |
| Mohanchand | 15 |
| Sai Sudheer | 15 |
| Glory | 15 |

## Schedule

| ID | WBS | Task | Duration | Start | Finish | Predecessors | Complete | Baseline start | Baseline finish | Baseline duration | Resources | Work | Actual work | Cost | Baseline cost | Actual cost |
| --- | --- | --- | --- | --- | --- | --- | --- | --- | --- | --- | --- | --- | --- | --- | --- | --- |
| 1 | 1 | **WSU Live Concert** | 91d | 2023-06-01 A | 2023-10-05 A |  | 100% | 2023-06-01 | 2023-10-05 | 91d |  | 1584h | 1584h | 48,100 | 48,100 | 48,100 |
| 2 | 1.1 | **Event Planning & Preparation** | 14d | 2023-06-01 A | 2023-06-20 A |  | 100% | 2023-06-01 | 2023-06-20 | 14d | Shreekar | 112h | 112h | 2,620 | 2,620 | 2,620 |
| 3 | 1.1.1 | objectives/ requirements. | 3d | 2023-06-01 A | 2023-06-05 A |  | 100% | 2023-06-01 | 2023-06-05 | 3d |  |  |  | 420 | 420 | 420 |
| 4 | 1.1.2 | Conduct market research and audience analysis | 2d | 2023-06-06 A | 2023-06-07 A | 3 | 100% | 2023-06-06 | 2023-06-07 | 2d |  |  |  | 200 | 200 | 200 |
| 5 | 1.1.3 | Determine event budget and funding sources | 3d | 2023-06-08 A | 2023-06-12 A | 4 | 100% | 2023-06-08 | 2023-06-12 | 3d |  |  |  | 100 | 100 | 100 |
| 6 | 1.1.4 | Develop event timeline and milestones | 3d | 2023-06-13 A | 2023-06-15 A | 5 | 100% | 2023-06-13 | 2023-06-15 | 3d |  |  |  | 120 | 120 | 120 |
| 7 | 1.1.5 | Identify and secure event sponsors | 3d | 2023-06-16 A | 2023-06-20 A | 6 | 100% | 2023-06-16 | 2023-06-20 | 3d |  |  |  | 100 | 100 | 100 |
| 8 | 1.2 | **Venue Selection and Setup** | 14d | 2023-06-21 A | 2023-07-10 A | 7 | 100% | 2023-06-21 | 2023-07-10 | 14d | Mohanchand | 112h | 112h | 6,780 | 6,780 | 6,780 |
| 9 | 1.2.1 | Research potential venues at Wichita State University | 3d | 2023-06-21 A | 2023-06-23 A |  | 100% | 2023-06-21 | 2023-06-23 | 3d |  |  |  | 650 | 650 | 650 |
| 10 | 1.2.2 | Visit and evaluate venue options | 3d | 2023-06-26 A | 2023-06-28 A | 9 | 100% | 2023-06-26 | 2023-06-28 | 3d |  |  |  | 750 | 750 | 750 |
| 11 | 1.2.3 | Finalize venue selection and contract negotiations | 2d | 2023-06-29 A | 2023-06-30 A | 10 | 100% | 2023-06-29 | 2023-06-30 | 2d |  |  |  | 800 | 800 | 800 |
| 12 | 1.2.4 | Coordinate logistics for stage setup, seating arrangement, and crowd management | 3d | 2023-07-03 A | 2023-07-05 A | 11 | 100% | 2023-07-03 | 2023-07-05 | 3d |  |  |  | 900 | 900 | 900 |
| 13 | 1.2.5 | Arrange for necessary equipment and technical infrastructure | 3d | 2023-07-06 A | 2023-07-10 A | 12 | 100% | 2023-07-06 | 2023-07-10 | 3d |  |  |  | 2,000 | 2,000 | 2,000 |
| 14 | 1.3 | **Artist and Performer Management** | 21d | 2023-06-21 A | 2023-07-19 A | 7 | 100% | 2023-06-21 | 2023-07-19 | 21d | Sai Sudheer | 168h | 168h | 13,320 | 13,320 | 13,320 |
| 15 | 1.3.1 | Identify and approach potential artists and performers | 4d | 2023-06-21 A | 2023-06-26 A |  | 100% | 2023-06-21 | 2023-06-26 | 4d |  |  |  | 300 | 300 | 300 |
| 16 | 1.3.2 | Negotiate contracts and fees with selected artists | 4d | 2023-06-27 A | 2023-06-30 A | 15 | 100% | 2023-06-27 | 2023-06-30 | 4d |  |  |  | 7,000 | 7,000 | 7,000 |
| 17 | 1.3.3 | Coordinate travel arrangements and accommodations | 4d | 2023-07-03 A | 2023-07-06 A | 16 | 100% | 2023-07-03 | 2023-07-06 | 4d |  |  |  | 1,000 | 1,000 | 1,000 |
| 18 | 1.3.4 | Facilitate communication and technical requirements with artists | 4d | 2023-07-07 A | 2023-07-12 A | 17 | 100% | 2023-07-07 | 2023-07-12 | 4d |  |  |  | 500 | 500 | 500 |
| 19 | 1.3.5 | Manage artist hospitality and backstage requirements | 5d | 2023-07-13 A | 2023-07-19 A | 18 | 100% | 2023-07-13 | 2023-07-19 | 5d |  |  |  | 2,000 | 2,000 | 2,000 |
| 20 | 1.4 | **Marketing and Promotion** | 37d | 2023-07-20 A | 2023-09-08 A | 19 | 100% | 2023-07-20 | 2023-09-08 | 37d | Glory | 296h | 296h | 6,390 | 6,390 | 6,390 |
| 21 | 1.4.1 | Develop event branding and messaging | 3d | 2023-07-20 A | 2023-07-24 A |  | 100% | 2023-07-20 | 2023-07-24 | 3d |  |  |  | 1,000 | 1,000 | 1,000 |
| 22 | 1.4.2 | **Create promotional materials** | 3d | 2023-07-25 A | 2023-07-27 A | 21 | 100% | 2023-07-25 | 2023-07-27 | 3d |  |  |  | 650 | 650 | 650 |
| 23 | 1.4.2.1 | Posters | 3d | 2023-07-25 A | 2023-07-27 A |  | 100% | 2023-07-25 | 2023-07-27 | 3d |  |  |  | 500 | 500 | 500 |
| 24 | 1.4.2.2 | Flyers | 3d | 2023-07-25 A | 2023-07-27 A |  | 100% | 2023-07-25 | 2023-07-27 | 3d |  |  |  | 100 | 100 | 100 |
| 25 | 1.4.2.3 | Online Ads | 3d | 2023-07-25 A | 2023-07-27 A |  | 100% | 2023-07-25 | 2023-07-27 | 3d |  |  |  | 50 | 50 | 50 |

| ID | WBS | Task | Duration | Start | Finish | Predecessors | Complete | Baseline start | Baseline finish | Baseline duration | Constraint | Resources | Work | Actual work | Cost | Baseline cost | Actual cost |
| --- | --- | --- | --- | --- | --- | --- | --- | --- | --- | --- | --- | --- | --- | --- | --- | --- | --- |
| 26 | 1.4.3 | **Implement marketing strategies** | 31d | 2023-07-28 A | 2023-09-08 A | 25 | 100% | 2023-07-28 | 2023-09-08 | 31d |  |  |  |  | 100 | 100 | 100 |
| 27 | 1.4.3.1 | Social Media | 5d | 2023-07-28 A | 2023-09-08 A |  | 100% | 2023-07-28 | 2023-09-08 | 5d | start no earlier than 2023-07-12 |  |  |  | 50 | 50 | 50 |
| 28 | 1.4.3.2 | Email Campaigns | 3d | 2023-07-28 A | 2023-08-01 A |  | 100% | 2023-07-28 | 2023-08-01 | 3d |  |  |  |  | 50 | 50 | 50 |
| 29 | 1.4.4 | Collaborate with media outlets for event coverage | 2d | 2023-08-02 A | 2023-08-03 A | 28 | 100% | 2023-08-02 | 2023-08-03 | 2d |  |  |  |  | 100 | 100 | 100 |
| 30 | 1.4.5 | Monitor ticket sales and implement promotional offers | 3d | 2023-08-04 A | 2023-08-08 A | 29 | 100% | 2023-08-04 | 2023-08-08 | 3d |  |  |  |  | 100 | 100 | 100 |
| 31 | 1.5 | **Ticketing and Registration** | 14d | 2023-08-09 A | 2023-08-28 A | 30 | 100% | 2023-08-09 | 2023-08-28 | 14d |  | Shreekar; Sai Sudheer | 224h | 224h | 3,660 | 3,660 | 3,660 |
| 32 | 1.5.1 | Set up an online ticketing system | 3d | 2023-08-09 A | 2023-08-11 A |  | 100% | 2023-08-09 | 2023-08-11 | 3d |  |  |  |  | 50 | 50 | 50 |
| 33 | 1.5.2 | Manage ticket inventory, pricing, and discounts | 3d | 2023-08-14 A | 2023-08-16 A | 32 | 100% | 2023-08-14 | 2023-08-16 | 3d |  |  |  |  | 50 | 50 | 50 |
| 34 | 1.5.3 | Provide customer support for ticketing inquiries | 2d | 2023-08-17 A | 2023-08-18 A | 33 | 100% | 2023-08-17 | 2023-08-18 | 2d |  |  |  |  | 50 | 50 | 50 |
| 35 | 1.5.4 | Coordinate entry management and ticket scanning | 3d | 2023-08-21 A | 2023-08-23 A | 34 | 100% | 2023-08-21 | 2023-08-23 | 3d |  |  |  |  | 100 | 100 | 100 |
| 36 | 1.5.5 | Collect attendee data for future marketing efforts | 3d | 2023-08-24 A | 2023-08-28 A | 35 | 100% | 2023-08-24 | 2023-08-28 | 3d |  |  |  |  | 50 | 50 | 50 |
| 37 | 1.6 | **Production and Operations** | 14d | 2023-08-29 A | 2023-09-15 A | 36 | 100% | 2023-08-29 | 2023-09-15 | 14d |  | Mohanchand; Sai Sudheer | 224h | 224h | 7,410 | 7,410 | 7,410 |
| 38 | 1.6.1 | **Coordinate technical aspects** | 3d | 2023-08-29 A | 2023-08-31 A |  | 100% | 2023-08-29 | 2023-08-31 | 3d |  |  |  |  | 3,000 | 3,000 | 3,000 |
| 39 | 1.6.1.1 | Sound | 3d | 2023-08-29 A | 2023-08-31 A |  | 100% | 2023-08-29 | 2023-08-31 | 3d |  |  |  |  | 1,000 | 1,000 | 1,000 |
| 40 | 1.6.1.2 | Lighting | 3d | 2023-08-29 A | 2023-08-31 A |  | 100% | 2023-08-29 | 2023-08-31 | 3d |  |  |  |  | 1,000 | 1,000 | 1,000 |
| 41 | 1.6.1.3 | Stage Management | 3d | 2023-08-29 A | 2023-08-31 A |  | 100% | 2023-08-29 | 2023-08-31 | 3d |  |  |  |  | 1,000 | 1,000 | 1,000 |
| 42 | 1.6.2 | Manage backstage logistics and artist requirements | 3d | 2023-09-01 A | 2023-09-05 A | 38 | 100% | 2023-09-01 | 2023-09-05 | 3d |  |  |  |  | 50 | 50 | 50 |
| 43 | 1.6.3 | Arrange for security personnel and crowd control measures | 4d | 2023-09-06 A | 2023-09-11 A | 42 | 100% | 2023-09-06 | 2023-09-11 | 4d |  |  |  |  | 500 | 500 | 500 |
| 44 | 1.6.4 | Coordinate food and beverage services | 4d | 2023-09-12 A | 2023-09-15 A | 43 | 100% | 2023-09-12 | 2023-09-15 | 4d |  |  |  |  | 500 | 500 | 500 |
| 45 | 1.7 | **Execution and Evaluation** | 14d | 2023-09-18 A | 2023-10-05 A | 44 | 100% | 2023-09-18 | 2023-10-05 | 14d |  | Glory; Mohanchand; Sai Sudheer; Shreekar | 448h | 448h | 7,920 | 7,920 | 7,920 |
| 46 | 1.7.1 | Set up and prepare for the event day | 3d | 2023-09-18 A | 2023-09-20 A |  | 100% | 2023-09-18 | 2023-09-20 | 3d |  |  |  |  | 1,000 | 1,000 | 1,000 |
| 47 | 1.7.2 | Oversee event operations and address any issues | 3d | 2023-09-21 A | 2023-09-25 A | 46 | 100% | 2023-09-21 | 2023-09-25 | 3d |  |  |  |  | 100 | 100 | 100 |
| 48 | 1.7.3 | Collect attendee feedback and conduct post-event evaluation | 3d | 2023-09-26 A | 2023-09-28 A | 47 | 100% | 2023-09-26 | 2023-09-28 | 3d |  |  |  |  | 100 | 100 | 100 |
| 49 | 1.7.4 | Conduct a financial review and evaluate event success | 4d | 2023-09-29 A | 2023-10-04 A | 48 | 100% | 2023-09-29 | 2023-10-04 | 4d |  |  |  |  |  |  |  |
| 50 | 1.7.5 | Document lessons learned and recommendations for future events | 1d | 2023-10-05 A | 2023-10-05 A | 49 | 100% | 2023-10-05 | 2023-10-05 | 1d |  |  |  |  |  |  |  |
